# EfxModule

Schedule from MS Project, 2006-01-16 to 2006-04-12, A marks actual dates.

## Calendars

- 标准: Mon-Fri 09:00-11:30, 13:00-18:00; Sat-Sun off.

## Resources

| Resource |
| --- |
| Michael |
| Jack |

## Schedule

| ID | WBS | Task | Duration | Start | Finish | Predecessors | Complete | Remaining | Total slack | Constraint | Deadline | Resources | Work | Actual work |
| --- | --- | --- | --- | --- | --- | --- | --- | --- | --- | --- | --- | --- | --- | --- |
| 1 | 1 | **特效编辑器功能扩充** | 58.25d? | 2006-01-16 A | 2006-04-12 |  | 33% | 39.13d? | 0d |  |  | Michael | 466h | 152.96h |
| 2 | 1.1 | Bug:特效模型替换 | 2.69d | 2006-01-16 A | 2006-01-18 A |  | 100% |  |  |  |  |  |  |  |
| 3 | 1.2 | New:Board类型的特效轴向锁定 | 2d? | 2006-01-19 A | 2006-01-23 A | 2 | 100% |  |  | start no earlier than 2006-01-23 | 2006-01-23 |  |  |  |
| 4 | 1.3 | Bug:时间帧固定 | 1d? | 2006-01-24 A | 2006-01-25 A | 3 | 100% |  |  |  |  |  |  |  |
| 5 | 1.4 | New:可以选择自身坐标与世界坐标的粒子发射方向 | 5.5d? | 2006-02-07 A | 2006-02-14 A | 4 | 100% |  |  | finish no earlier than 2006-02-14 |  |  |  |  |
| 6 | 1.5 | New：EFF自身旋转与世界坐标旋转开关 | 6.44d? | 2006-02-07 A | 2006-02-15 A | 4 | 100% |  |  | finish no earlier than 2006-02-15 |  |  |  |  |
| 7 | 1.6 | New：自身坐标控制，与世界坐标区分 | 6.44d? | 2006-02-07 A | 2006-02-15 A | 4 | 100% |  |  | finish no earlier than 2006-02-15 |  |  |  |  |
| 8 | 1.7 | New:对以前特效的一些代码进行了改进(增加) | 2.81d? | 2006-02-15 A | 2006-02-20 A | 7 | 100% |  |  | finish no earlier than 2006-02-20 |  |  |  |  |
| 9 | 1.8 | Modify:编辑即时刷新 状态栏刷新 | 3d? | 2006-02-20 | 2006-02-24 | 8 |  |  | 0d | start no earlier than 2006-01-20 |  |  |  |  |
| 10 | 1.9 | New:简单的复制粘贴编辑功能 | 2d? | 2006-02-24 | 2006-02-28 | 9 |  |  | 0d |  |  |  |  |  |
| 11 | 1.10 | Bug:收缩粒子范围 | 2d | 2006-02-28 | 2006-03-02 | 10 |  |  | 0d |  |  |  |  |  |
| 12 | 1.11 | Bug:ground方式修复 | 2d | 2006-03-02 | 2006-03-06 | 11 |  |  | 0d | start no earlier than 2006-01-16 |  |  |  |  |
| 13 | 1.12 | Bug:单独粒子个体运算 | 2d | 2006-03-06 | 2006-03-08 | 12 |  |  | 0d |  |  |  |  |  |
| 14 | 1.13 | New:Round方式发射点任意 | 3d | 2006-03-08 | 2006-03-13 | 13 |  |  | 0d |  |  |  |  |  |
| 15 | 1.14 | New：导入的路径可以进行简单的编辑 | 3d | 2006-03-13 | 2006-03-16 | 14 |  |  | 0d |  |  |  |  |  |
| 16 | 1.15 | New:导入模型受光 | 2d? | 2006-03-17 | 2006-03-21 | 15 |  |  | 0d |  |  |  |  |  |
| 17 | 1.16 | New:par文件合并 | 3d | 2006-03-21 | 2006-03-24 | 16 |  |  | 0d |  |  |  |  |  |
| 18 | 1.17 | Bug：eff普通模式透明问题 | 3d? | 2006-03-24 | 2006-03-29 | 17 |  |  | 0d |  |  |  |  |  |
| 19 | 1.18 | New:贴图缩略图功能 | 3d? | 2006-03-29 | 2006-04-03 | 18 |  |  | 0d | start no earlier than 2006-01-31 |  |  |  |  |
| 20 | 1.19 | New:添加动态dummy | 3d? | 2006-04-03 | 2006-04-06 | 19 |  |  | 0d | start no earlier than 2006-01-26 |  |  |  |  |
| 21 | 1.20 | New:特效分组 | 3d? | 2006-04-06 | 2006-04-12 | 20 |  |  | 0d |  |  |  |  |  |
| 22 | 1.21 | New:编辑器网格显示开关 | 3d? | 2006-04-06 | 2006-04-12 | 20 |  |  | 0d |  |  |  |  |  |
| 23 | 1.22 | New:Drag特效平滑轨迹 | 3d? | 2006-04-06 | 2006-04-12 | 20 |  |  | 0d |  |  |  |  |  |
| 24 | 1.23 | New:粒子衍生方式 | 3d? | 2006-04-06 | 2006-04-12 | 20 |  |  | 0d |  |  |  |  |  |
| 25 | 1.24 | Bug:渲染加色方式 | 3d? | 2006-04-06 | 2006-04-12 | 20 |  |  | 0d |  |  |  |  |  |
| 26 | 1.25 | New:视图方式编辑 | 3d? | 2006-04-06 | 2006-04-12 | 20 |  |  | 0d |  |  |  |  |  |
| 27 | 1.26 | New：序列帧选择 | 3d? | 2006-04-06 | 2006-04-12 | 20 |  |  | 0d |  |  |  |  |  |
| 28 | 1.27 | New：手动操作的物件缩放旋转位移 | 3d? | 2006-04-06 | 2006-04-12 | 20 |  |  | 0d |  |  |  |  |  |

Notes:
- 1: 特效编辑器修改与功能扩充2006-01-16
- 2: 增加的任务.之前产生的模型特效bug,上次修改主要是临时为美术做翅膀,并不完全,这次做了比较大的改动,同时改进了模型特效的管理,避免重复创建删除
- 3: BillBoard特效的轴向可以分别锁定而不是固定的（由于客户端版本更新和修改bug，以及特效编辑中模型特效内存管理的改写，导致delay3天）
- 4: 编辑器锁定帧速度为每秒30帧（和游戏帧同步）
- 5: 龙喷火特效相关
- 6: 龙喷火特效相关
- 7: 龙喷火特效相关
- 8: 在改5 6 7任务时发现有些代码可以改进,小改了一下
- 9: 龙喷火问题，正方向发射粒子
- 11: 收缩范围必须为整数，否则出错
- 12: 贴图Bug，贴图必须空边2/3，否这只有1/4贴图
- 13: 粒子出生后，自身EFF动画不会因粒子出生而重新开始
- 14: 旋转粒子方式发射点选择，目前的粒子都是从固定点发射，需要可以在圆形轨迹的任意点发射
- 16: 目前的特效导入模型关掉了光照，使用顶点色渲染，需要打开相关的光照，参数依照游戏中的光照参数
- 17: 组合par文件特效的时候，在列表框中可以多选子项一次完成移动和合并
- 19: 在选择需要的特效贴图的时候，能够即时看到该贴图的内容
- 20: 可以使物体或者粒子跟随粒子运动，在dummy之间运动，在dummy之间做移动，缩放和旋转。
- 21: 目前编辑器在启动的时候会读取整个特效目录下的所有文件，需要修改成读取指定的特效管理文件（rawdata），控制一次载入的资源数量
- 22: 可以显示或者隐藏编辑器的网格
- 23: 目前的Drag特效取每一帧的位置作为参考点，当两帧之间的跨度很大的时候，drag的效果很生硬，需要平滑轨迹。这里建议使用spline或者B样条线方程做插值，而不是直接线性的取点。最终效果参考三国无双和刀魂等游戏
- 24: 目前的粒子销毁以地面高度为参考，需要修改成可以任意制定条件，如：生命周期，空间范围等
- 25: 去掉不需要的加色方式，增加减色，具体参考美术人员的要求
- 26: 直接在渲染视图中编辑粒子的移动，旋转和缩放，类似max的编辑方式
