# 海盗王2008程序

Schedule from MS Project, 2008-07-15 to 2008-08-11, A marks actual dates.
lark

## Calendars

- 标准: Mon-Fri 08:00-12:00, 13:00-17:00; Sat-Sun off. Exceptions (off unless hours are given): 2008-07-19 08:00-12:00, 13:00-17:00, 2008-07-26 08:00-12:00, 13:00-17:00.

## Resources

| Resource |
| --- |
| 徐勤 |
| 季卓尔 |
| 孙仕贤 |
| 史雨 |
| 周长君 |
| 燕宁宁 |
| 李灵辉 |
| 老杨 |

## Schedule

| ID | WBS | Task | Duration | Start | Finish | Predecessors | Complete | Remaining | Total slack | Free slack | Constraint | Resources | Work | Actual work |
| --- | --- | --- | --- | --- | --- | --- | --- | --- | --- | --- | --- | --- | --- | --- |
| 1 | 1 | **海盗王2008版本V1.0** | 22d? | 2008-07-15 A | 2008-08-11 |  | 25% | 16.39d? | 0d |  |  |  | 1650.4h | 438.63h |
| 2 | 1.1 | **音乐库变更** | 22d? | 2008-07-15 A | 2008-08-11 |  | 41% | 13d? | 0d |  |  | 徐勤 | 256h | 80h |
| 3 | 1.1.1 | 音乐库Demo | 13d? | 2008-07-15 A | 2008-07-29 |  | 69% | 4d? | 0d |  | start no earlier than 2008-07-15 | 徐勤 | 104h | 72h |
| 4 | 1.1.2 | 游戏嵌入 | 5d? | 2008-07-30 | 2008-08-05 | 3 |  |  | 0d |  | finish no earlier than 2008-08-05 | 徐勤 | 40h |  |
| 5 | 1.1.3 | 最后测试 | 4d? | 2008-08-06 | 2008-08-11 | 4 |  |  | 0d |  | finish no earlier than 2008-08-11 | 徐勤 | 32h |  |
| 6 | 1.2 | **Login登录流程** | 11d? | 2008-07-21 | 2008-08-01 |  |  |  | 6d |  |  | 徐勤 | 176h |  |
| 7 | 1.2.1 | Flash相关 | 5d? | 2008-07-21 | 2008-07-25 |  |  |  | 6d |  | start no earlier than 2008-07-21 | 徐勤 | 40h |  |
| 8 | 1.2.2 | 选服等流程 | 6d? | 2008-07-26 | 2008-08-01 | 7 |  |  | 6d |  | finish no earlier than 2008-08-01 | 徐勤 | 48h |  |
| 9 | 1.3 | 鼠标中轮滚动 | 10d? | 2008-07-29 | 2008-08-11 |  |  |  | 0d |  | finish no earlier than 2008-08-11 | 徐勤 [10%] | 8h |  |
| 10 | 1.4 | **寻路** | 22d? | 2008-07-15 A | 2008-08-11 |  | 32% | 15d? | 0d |  |  | 季卓尔 | 352h | 112h |
| 11 | 1.4.1 | 小地图 | 11d? | 2008-07-15 A | 2008-07-26 |  | 64% | 4d? | 0d |  | finish no earlier than 2008-07-26 | 季卓尔 | 88h | 56h |
| 12 | 1.4.2 | NPC等 | 11d? | 2008-07-28 | 2008-08-11 | 11 |  |  | 0d |  | finish no earlier than 2008-08-11 | 季卓尔 | 88h |  |
| 13 | 1.5 | **引擎优化** | 22d? | 2008-07-15 | 2008-08-11 |  |  |  | 0d |  |  | 季卓尔 [20%] | 219.2h |  |
| 14 | 1.5.1 | 版本一 | 11d? | 2008-07-15 | 2008-07-26 |  |  |  | 6d | 0d | start no earlier than 2008-07-15 | 季卓尔 | 88h |  |
| 15 | 1.5.2 | 版本二 | 5d? | 2008-07-28 | 2008-08-01 | 14 |  |  | 6d |  | start no earlier than 2008-07-28 | 季卓尔 | 40h |  |
| 16 | 1.5.3 | 测试 | 7d? | 2008-08-01 | 2008-08-11 |  |  |  | 0d |  | finish no earlier than 2008-08-11 | 季卓尔 | 56h |  |
| 17 | 1.6 | GM工具 | 15d? | 2008-07-15 A | 2008-07-31 |  | 33% | 10d? | 0d |  | start no earlier than 2008-07-15 | 周长君 [20%] | 24h | 8h |
| 18 | 1.7 | 信息查询 | 7d? | 2008-08-01 | 2008-08-11 | 17 |  |  | 0d |  | start no earlier than 2008-08-01 | 周长君 | 56h |  |
| 19 | 1.8 | **竞技场开发** | 15d? | 2008-07-15 A | 2008-07-31 |  | 43% | 8.57d? | 7d |  |  | 孙仕贤 | 224h | 104.23h |
| 20 | 1.8.1 | 排行榜相关 | 10d? | 2008-07-15 A | 2008-07-25 |  | 60% | 4d? | 12d |  | start no earlier than 2008-07-15 | 孙仕贤; 周长君 [10%] | 88h | 52.8h |
| 21 | 1.8.2 | 其他Bug接口调试 | 4d? | 2008-07-28 | 2008-07-31 |  |  |  | 7d |  | start no earlier than 2008-07-28 | 孙仕贤 [50%] | 16h |  |
| 22 | 1.9 | 好友功能修改 | 9.09d? | 2008-07-28 | 2008-08-08 |  |  |  | 1d |  | finish no earlier than 2008-08-08 | 孙仕贤; 李灵辉 [10%] | 80h |  |
| 23 | 1.10 | 女神系统 | 5d? | 2008-07-22 | 2008-07-26 |  |  |  | 11d |  | finish no earlier than 2008-07-26 | 史雨 | 40h |  |
| 24 | 1.11 | 更新工具CDN修改 | 2d? | 2008-07-19 | 2008-07-21 |  |  |  | 16d |  | start no earlier than 2008-07-19 | 燕宁宁 [50%]; 史雨 [50%] | 16h |  |
| 25 | 1.12 | 聊天功能修改 | 5d? | 2008-07-22 | 2008-07-26 |  |  |  | 11d |  | finish no earlier than 2008-07-26 | 燕宁宁 | 40h |  |
| 26 | 1.13 | 角色属性追加 | 3d? | 2008-07-21 A | 2008-07-23 A |  | 100% |  |  |  | finish no earlier than 2008-07-23 | 李灵辉 | 24h | 24h |
| 27 | 1.14 | 服务器稳定 | 21d? | 2008-07-16 A | 2008-08-11 |  | 38% | 13d? | 0d |  | start no earlier than 2008-07-16 | 李灵辉 [10%] | 16.8h | 6.4h |
| 28 | 1.15 | 自动任务 | 2d | 2008-07-17 A | 2008-07-18 A |  | 100% |  |  |  | start no earlier than 2008-07-17 | 李灵辉 | 16h | 16h |
| 29 | 1.16 | 道具复制 | 4d | 2008-07-15 A | 2008-07-18 A |  | 100% |  |  |  | finish no earlier than 2008-07-18 | 周长君 | 32h | 32h |
| 30 | 1.17 | 道具锁定 | 7d? | 2008-07-24 A | 2008-07-31 A |  | 100% |  |  |  | start no earlier than 2008-07-24 | 老杨 | 56h | 56h |
| 31 | 1.18 | 海外版本Bug | 18d? | 2008-07-19 | 2008-08-11 |  |  |  | 0d |  | finish no earlier than 2008-08-11 | 李灵辉 [10%] | 14.4h |  |

Notes:
- 14: 地形加大 / 模型增加
- 15: 天空盒 / 视野加大
